# CSS_Project Schedule_v0.2

Schedule from MS Project, 2014-11-24 to 2014-12-22.

## Calendars

- Standard: Mon-Fri 08:00-12:00, 13:00-17:00; Sat-Sun off.

## Resources

| Resource |
| --- |
| Team |
| Dev1 |
| Dev2 |
| Dev3 |
| Dev4 |
| Dev5 |
| Dev6 |
| Dev7 |

## Schedule

| ID | WBS | Task | Duration | Start | Finish | Predecessors | Total slack | Free slack | Constraint | Resources | Work |
| --- | --- | --- | --- | --- | --- | --- | --- | --- | --- | --- | --- |
| 1 | 1 | **Project-Code** | 13d | 2014-11-24 08:00 | 2014-12-10 17:00 |  |  |  |  |  | 456h |
| 2 | 1.1 | **Preparation** | 20.5d | 2014-11-24 08:00 | 2014-12-22 12:00 |  |  |  |  |  | 8h |
| 3 | 1.1.1 | Kick off project | 0.5d | 2014-11-24 08:00 | 2014-11-24 12:00 |  | 20d |  | start no earlier than 2014-11-24 08:00 | Team | 4h |
| 4 | 1.1.2 | Prepare environment | 0.5d | 2014-11-24 08:00 | 2014-11-24 12:00 |  | 0.5d | 0d |  | Team | 4h |
| 5 | 1.2 | **Project Iteration 1** | 12d | 2014-11-24 13:00 | 2014-12-10 12:00 | 4 | 0.5d |  |  |  | 448h |
| 6 | 1.2.1 | **UC1, UC7 - Validation, Logging** | 11d | 2014-11-24 13:00 | 2014-12-09 12:00 |  | 0.5d | 0d |  | Dev1 | 88h |
| 7 | 1.2.1.1 | **Requirement Analyzing** | 1.5d | 2014-11-24 13:00 | 2014-11-25 17:00 |  | 0.5d |  |  |  |  |
| 8 | 1.2.1.1.1 | Study requirement | 0.4d | 2014-11-24 13:00 | 2014-11-24 16:12 |  | 0.5d | 0d |  |  |  |
| 9 | 1.2.1.1.2 | Prepare requirement specification | 0.6d | 2014-11-24 16:12 | 2014-11-25 12:00 | 8 | 0.5d | 0d |  |  |  |
| 10 | 1.2.1.1.3 | Review requirement specification | 0.5d | 2014-11-25 13:00 | 2014-11-25 17:00 | 9 | 0.5d | 0d |  |  |  |
| 11 | 1.2.1.2 | **Detail Design** | 1.5d | 2014-11-26 08:00 | 2014-11-27 12:00 |  | 0.5d |  |  |  |  |
| 12 | 1.2.1.2.1 | Study input design document | 0.4d | 2014-11-26 08:00 | 2014-11-26 11:12 | 10 | 0.5d | 0d |  |  |  |
| 13 | 1.2.1.2.2 | Prepare design specification | 0.6d | 2014-11-26 11:12 | 2014-11-26 17:00 | 12 | 0.5d | 0d |  |  |  |
| 14 | 1.2.1.2.3 | Review design specification | 0.5d | 2014-11-27 08:00 | 2014-11-27 12:00 | 13 | 0.5d | 0d |  |  |  |
| 15 | 1.2.1.3 | **UT Cases Preparing** | 1.5d | 2014-11-27 13:00 | 2014-11-28 17:00 |  | 0.5d |  |  |  |  |
| 16 | 1.2.1.3.1 | Prepare UT cases document | 1d | 2014-11-27 13:00 | 2014-11-28 12:00 | 14 | 0.5d | 0d |  |  |  |
| 17 | 1.2.1.3.2 | Review UT cases document round 1 | 0.5d | 2014-11-28 13:00 | 2014-11-28 17:00 | 16 | 0.5d | 0d |  |  |  |
| 18 | 1.2.1.4 | **Coding** | 3d | 2014-12-01 08:00 | 2014-12-03 17:00 |  | 0.5d |  |  |  |  |
| 19 | 1.2.1.4.1 | Code (output: draft version) | 1d | 2014-12-01 08:00 | 2014-12-01 17:00 | 17 | 0.5d | 0d |  |  |  |
| 20 | 1.2.1.4.2 | Review codes round 1 | 0.5d | 2014-12-02 08:00 | 2014-12-02 12:00 | 19 | 0.5d | 0d |  |  |  |
| 21 | 1.2.1.4.3 | Complete code | 0.5d | 2014-12-02 13:00 | 2014-12-02 17:00 | 20 | 0.5d | 0d |  |  |  |
| 22 | 1.2.1.4.4 | Self review & Fix bugs | 0.5d | 2014-12-03 08:00 | 2014-12-03 12:00 | 21 | 0.5d | 0d |  |  |  |
| 23 | 1.2.1.4.5 | Review codes round 2 | 0.5d | 2014-12-03 13:00 | 2014-12-03 17:00 | 22 | 0.5d | 0d |  |  |  |
| 24 | 1.2.1.5 | **Update UT Cases** | 1d | 2014-12-04 08:00 | 2014-12-04 17:00 |  | 0.5d |  |  |  |  |
| 25 | 1.2.1.5.1 | Update UT cases document | 0.5d | 2014-12-04 08:00 | 2014-12-04 12:00 | 23 | 0.5d | 0d |  |  |  |
| 26 | 1.2.1.5.2 | Review UT cases document round 2 | 0.5d | 2014-12-04 13:00 | 2014-12-04 17:00 | 25 | 0.5d | 0d |  |  |  |

Notes:
- 10: Eval1
- 14: Eval2
- 23: Eval3
- 26: Eval4

| ID | WBS | Task | Duration | Start | Finish | Predecessors | Total slack | Free slack | Resources | Work |
| --- | --- | --- | --- | --- | --- | --- | --- | --- | --- | --- |
| 27 | 1.2.1.6 | **Manual UT Execution** | 1d | 2014-12-05 08:00 | 2014-12-05 17:00 |  | 0.5d |  |  |  |
| 28 | 1.2.1.6.1 | Execute UT manually & Fix bugs | 0.5d | 2014-12-05 08:00 | 2014-12-05 12:00 | 26 | 0.5d | 0d |  |  |
| 29 | 1.2.1.6.2 | Review UT execution results round 1 | 0.5d | 2014-12-05 13:00 | 2014-12-05 17:00 | 28 | 0.5d | 0d |  |  |
| 30 | 1.2.1.7 | **Automated UT Execution** | 1.5d | 2014-12-08 08:00 | 2014-12-09 12:00 |  | 0.5d |  |  |  |
| 31 | 1.2.1.7.1 | Prepare UT scripts | 0.5d | 2014-12-08 08:00 | 2014-12-08 12:00 | 29 | 0.5d | 0d |  |  |
| 32 | 1.2.1.7.2 | Execute UT automatedly, Tuning scripts, update codes | 0.5d | 2014-12-08 13:00 | 2014-12-08 17:00 | 31 | 0.5d | 0d |  |  |
| 33 | 1.2.1.7.3 | Review UT scripts | 0.5d | 2014-12-09 08:00 | 2014-12-09 12:00 | 32 | 0.5d |  |  |  |
| 34 | 1.2.2 | **UC2 - Withdraw Money** | 11d | 2014-11-24 13:00 | 2014-12-09 12:00 |  | 1.5d |  | Dev2 | 88h |
| 35 | 1.2.2.1 | **Requirement Analyzing** | 1.5d | 2014-11-24 13:00 | 2014-11-25 17:00 |  | 1.5d |  |  |  |
| 36 | 1.2.2.1.1 | Study requirement | 0.4d | 2014-11-24 13:00 | 2014-11-24 16:12 |  | 1.5d | 0d |  |  |
| 37 | 1.2.2.1.2 | Prepare requirement specification | 0.6d | 2014-11-24 16:12 | 2014-11-25 12:00 | 36 | 1.5d | 0d |  |  |
| 38 | 1.2.2.1.3 | Review requirement specification | 0.5d | 2014-11-25 13:00 | 2014-11-25 17:00 | 37 | 1.5d | 0d |  |  |
| 39 | 1.2.2.2 | **Detail Design** | 1.5d | 2014-11-26 08:00 | 2014-11-27 12:00 |  | 1.5d |  |  |  |
| 40 | 1.2.2.2.1 | Study input design document | 0.4d | 2014-11-26 08:00 | 2014-11-26 11:12 | 38 | 1.5d | 0d |  |  |
| 41 | 1.2.2.2.2 | Prepare design specification | 0.6d | 2014-11-26 11:12 | 2014-11-26 17:00 | 40 | 1.5d | 0d |  |  |
| 42 | 1.2.2.2.3 | Review design specification | 0.5d | 2014-11-27 08:00 | 2014-11-27 12:00 | 41 | 1.5d | 0d |  |  |
| 43 | 1.2.2.3 | **UT Cases Preparing** | 1.5d | 2014-11-27 13:00 | 2014-11-28 17:00 |  | 1.5d |  |  |  |
| 44 | 1.2.2.3.1 | Prepare UT cases document | 1d | 2014-11-27 13:00 | 2014-11-28 12:00 | 42 | 1.5d | 0d |  |  |
| 45 | 1.2.2.3.2 | Review UT cases document round 1 | 0.5d | 2014-11-28 13:00 | 2014-11-28 17:00 | 44 | 1.5d | 0d |  |  |
| 46 | 1.2.2.4 | **Coding** | 3d | 2014-12-01 08:00 | 2014-12-03 17:00 |  | 1.5d |  |  |  |
| 47 | 1.2.2.4.1 | Code (output: draft version) | 1d | 2014-12-01 08:00 | 2014-12-01 17:00 | 45 | 1.5d | 0d |  |  |
| 48 | 1.2.2.4.2 | Review codes round 1 | 0.5d | 2014-12-02 08:00 | 2014-12-02 12:00 | 47 | 1.5d | 0d |  |  |
| 49 | 1.2.2.4.3 | Complete code | 0.5d | 2014-12-02 13:00 | 2014-12-02 17:00 | 48 | 1.5d | 0d |  |  |
| 50 | 1.2.2.4.4 | Self review & Fix bugs | 0.5d | 2014-12-03 08:00 | 2014-12-03 12:00 | 49 | 1.5d | 0d |  |  |
| 51 | 1.2.2.4.5 | Review codes round 2 | 0.5d | 2014-12-03 13:00 | 2014-12-03 17:00 | 50 | 1.5d | 0d |  |  |

Notes:
- 29: Eval5
- 38: Eval1
- 42: Eval2
- 51: Eval3

| ID | WBS | Task | Duration | Start | Finish | Predecessors | Total slack | Free slack | Resources | Work |
| --- | --- | --- | --- | --- | --- | --- | --- | --- | --- | --- |
| 52 | 1.2.2.5 | **Update UT Cases** | 1d | 2014-12-04 08:00 | 2014-12-04 17:00 |  | 1.5d |  |  |  |
| 53 | 1.2.2.5.1 | Update UT cases document | 0.5d | 2014-12-04 08:00 | 2014-12-04 12:00 | 51 | 1.5d | 0d |  |  |
| 54 | 1.2.2.5.2 | Review UT cases document round 2 | 0.5d | 2014-12-04 13:00 | 2014-12-04 17:00 | 53 | 1.5d | 0d |  |  |
| 55 | 1.2.2.6 | **Manual UT Execution** | 1d | 2014-12-05 08:00 | 2014-12-05 17:00 |  | 1.5d |  |  |  |
| 56 | 1.2.2.6.1 | Execute UT manually & Fix bugs | 0.5d | 2014-12-05 08:00 | 2014-12-05 12:00 | 54 | 1.5d | 0d |  |  |
| 57 | 1.2.2.6.2 | Review UT execution results round 1 | 0.5d | 2014-12-05 13:00 | 2014-12-05 17:00 | 56 | 1.5d | 0d |  |  |
| 58 | 1.2.2.7 | **Automated UT Execution** | 1.5d | 2014-12-08 08:00 | 2014-12-09 12:00 |  | 1.5d |  |  |  |
| 59 | 1.2.2.7.1 | Prepare UT scripts | 0.5d | 2014-12-08 08:00 | 2014-12-08 12:00 | 57 | 1.5d | 0d |  |  |
| 60 | 1.2.2.7.2 | Execute UT automatedly, Tuning scripts, update codes | 0.5d | 2014-12-08 13:00 | 2014-12-08 17:00 | 59 | 1.5d | 0d |  |  |
| 61 | 1.2.2.7.3 | Review UT scripts | 0.5d | 2014-12-09 08:00 | 2014-12-09 12:00 | 60 | 1.5d |  |  |  |
| 62 | 1.2.3 | **UC3, UC6 - Check Balance, Change PIN** | 11d | 2014-11-24 13:00 | 2014-12-09 12:00 |  | 1.5d |  | Dev3 | 88h |
| 63 | 1.2.3.1 | **Requirement Analyzing** | 1.5d | 2014-11-24 13:00 | 2014-11-25 17:00 |  | 1.5d |  |  |  |
| 64 | 1.2.3.1.1 | Study requirement | 0.4d | 2014-11-24 13:00 | 2014-11-24 16:12 |  | 1.5d | 0d |  |  |
| 65 | 1.2.3.1.2 | Prepare requirement specification | 0.6d | 2014-11-24 16:12 | 2014-11-25 12:00 | 64 | 1.5d | 0d |  |  |
| 66 | 1.2.3.1.3 | Review requirement specification | 0.5d | 2014-11-25 13:00 | 2014-11-25 17:00 | 65 | 1.5d | 0d |  |  |
| 67 | 1.2.3.2 | **Detail Design** | 1.5d | 2014-11-26 08:00 | 2014-11-27 12:00 |  | 1.5d |  |  |  |
| 68 | 1.2.3.2.1 | Study input design document | 0.4d | 2014-11-26 08:00 | 2014-11-26 11:12 | 66 | 1.5d | 0d |  |  |
| 69 | 1.2.3.2.2 | Prepare design specification | 0.6d | 2014-11-26 11:12 | 2014-11-26 17:00 | 68 | 1.5d | 0d |  |  |
| 70 | 1.2.3.2.3 | Review design specification | 0.5d | 2014-11-27 08:00 | 2014-11-27 12:00 | 69 | 1.5d | 0d |  |  |
| 71 | 1.2.3.3 | **UT Cases Preparing** | 1.5d | 2014-11-27 13:00 | 2014-11-28 17:00 |  | 1.5d |  |  |  |
| 72 | 1.2.3.3.1 | Prepare UT cases document | 1d | 2014-11-27 13:00 | 2014-11-28 12:00 | 70 | 1.5d | 0d |  |  |
| 73 | 1.2.3.3.2 | Review UT cases document round 1 | 0.5d | 2014-11-28 13:00 | 2014-11-28 17:00 | 72 | 1.5d | 0d |  |  |
| 74 | 1.2.3.4 | **Coding** | 3d | 2014-12-01 08:00 | 2014-12-03 17:00 |  | 1.5d |  |  |  |
| 75 | 1.2.3.4.1 | Code (output: draft version) | 1d | 2014-12-01 08:00 | 2014-12-01 17:00 | 73 | 1.5d | 0d |  |  |
| 76 | 1.2.3.4.2 | Review codes round 1 | 0.5d | 2014-12-02 08:00 | 2014-12-02 12:00 | 75 | 1.5d | 0d |  |  |
| 77 | 1.2.3.4.3 | Complete code | 0.5d | 2014-12-02 13:00 | 2014-12-02 17:00 | 76 | 1.5d | 0d |  |  |
| 78 | 1.2.3.4.4 | Self review & Fix bugs | 0.5d | 2014-12-03 08:00 | 2014-12-03 12:00 | 77 | 1.5d | 0d |  |  |
| 79 | 1.2.3.4.5 | Review codes round 2 | 0.5d | 2014-12-03 13:00 | 2014-12-03 17:00 | 78 | 1.5d | 0d |  |  |

Notes:
- 54: Eval4
- 57: Eval5
- 66: Eval1
- 70: Eval2
- 79: Eval3

| ID | WBS | Task | Duration | Start | Finish | Predecessors | Total slack | Free slack | Resources | Work |
| --- | --- | --- | --- | --- | --- | --- | --- | --- | --- | --- |
| 80 | 1.2.3.5 | **Update UT Cases** | 1d | 2014-12-04 08:00 | 2014-12-04 17:00 |  | 1.5d |  |  |  |
| 81 | 1.2.3.5.1 | Update UT cases document | 0.5d | 2014-12-04 08:00 | 2014-12-04 12:00 | 79 | 1.5d | 0d |  |  |
| 82 | 1.2.3.5.2 | Review UT cases document round 2 | 0.5d | 2014-12-04 13:00 | 2014-12-04 17:00 | 81 | 1.5d | 0d |  |  |
| 83 | 1.2.3.6 | **Manual UT Execution** | 1d | 2014-12-05 08:00 | 2014-12-05 17:00 |  | 1.5d |  |  |  |
| 84 | 1.2.3.6.1 | Execute UT manually & Fix bugs | 0.5d | 2014-12-05 08:00 | 2014-12-05 12:00 | 82 | 1.5d | 0d |  |  |
| 85 | 1.2.3.6.2 | Review UT execution results round 1 | 0.5d | 2014-12-05 13:00 | 2014-12-05 17:00 | 84 | 1.5d | 0d |  |  |
| 86 | 1.2.3.7 | **Automated UT Execution** | 1.5d | 2014-12-08 08:00 | 2014-12-09 12:00 |  | 1.5d |  |  |  |
| 87 | 1.2.3.7.1 | Prepare UT scripts | 0.5d | 2014-12-08 08:00 | 2014-12-08 12:00 | 85 | 1.5d | 0d |  |  |
| 88 | 1.2.3.7.2 | Execute UT automatedly, Tuning scripts, update codes | 0.5d | 2014-12-08 13:00 | 2014-12-08 17:00 | 87 | 1.5d | 0d |  |  |
| 89 | 1.2.3.7.3 | Review UT scripts | 0.5d | 2014-12-09 08:00 | 2014-12-09 12:00 | 88 | 1.5d |  |  |  |
| 90 | 1.2.4 | **UC4 - View History** | 11d | 2014-11-24 13:00 | 2014-12-09 12:00 |  | 1.5d |  | Dev4 | 88h |
| 91 | 1.2.4.1 | **Requirement Analyzing** | 1.5d | 2014-11-24 13:00 | 2014-11-25 17:00 |  | 1.5d |  |  |  |
| 92 | 1.2.4.1.1 | Study requirement | 0.4d | 2014-11-24 13:00 | 2014-11-24 16:12 |  | 1.5d | 0d |  |  |
| 93 | 1.2.4.1.2 | Prepare requirement specification | 0.6d | 2014-11-24 16:12 | 2014-11-25 12:00 | 92 | 1.5d | 0d |  |  |
| 94 | 1.2.4.1.3 | Review requirement specification | 0.5d | 2014-11-25 13:00 | 2014-11-25 17:00 | 93 | 1.5d | 0d |  |  |
| 95 | 1.2.4.2 | **Detail Design** | 1.5d | 2014-11-26 08:00 | 2014-11-27 12:00 |  | 1.5d |  |  |  |
| 96 | 1.2.4.2.1 | Study input design document | 0.4d | 2014-11-26 08:00 | 2014-11-26 11:12 | 94 | 1.5d | 0d |  |  |
| 97 | 1.2.4.2.2 | Prepare design specification | 0.6d | 2014-11-26 11:12 | 2014-11-26 17:00 | 96 | 1.5d | 0d |  |  |
| 98 | 1.2.4.2.3 | Review design specification | 0.5d | 2014-11-27 08:00 | 2014-11-27 12:00 | 97 | 1.5d | 0d |  |  |
| 99 | 1.2.4.3 | **UT Cases Preparing** | 1.5d | 2014-11-27 13:00 | 2014-11-28 17:00 |  | 1.5d |  |  |  |
| 100 | 1.2.4.3.1 | Prepare UT cases document | 1d | 2014-11-27 13:00 | 2014-11-28 12:00 | 98 | 1.5d | 0d |  |  |
| 101 | 1.2.4.3.2 | Review UT cases document round 1 | 0.5d | 2014-11-28 13:00 | 2014-11-28 17:00 | 100 | 1.5d | 0d |  |  |
| 102 | 1.2.4.4 | **Coding** | 3d | 2014-12-01 08:00 | 2014-12-03 17:00 |  | 1.5d |  |  |  |
| 103 | 1.2.4.4.1 | Code (output: draft version) | 1d | 2014-12-01 08:00 | 2014-12-01 17:00 | 101 | 1.5d | 0d |  |  |
| 104 | 1.2.4.4.2 | Review codes round 1 | 0.5d | 2014-12-02 08:00 | 2014-12-02 12:00 | 103 | 1.5d | 0d |  |  |
| 105 | 1.2.4.4.3 | Complete code | 0.5d | 2014-12-02 13:00 | 2014-12-02 17:00 | 104 | 1.5d | 0d |  |  |
| 106 | 1.2.4.4.4 | Self review & Fix bugs | 0.5d | 2014-12-03 08:00 | 2014-12-03 12:00 | 105 | 1.5d | 0d |  |  |
| 107 | 1.2.4.4.5 | Review codes round 2 | 0.5d | 2014-12-03 13:00 | 2014-12-03 17:00 | 106 | 1.5d | 0d |  |  |

Notes:
- 82: Eval4
- 85: Eval5
- 94: Eval1
- 98: Eval2
- 107: Eval3

| ID | WBS | Task | Duration | Start | Finish | Predecessors | Total slack | Free slack | Resources | Work |
| --- | --- | --- | --- | --- | --- | --- | --- | --- | --- | --- |
| 108 | 1.2.4.5 | **Update UT Cases** | 1d | 2014-12-04 08:00 | 2014-12-04 17:00 |  | 1.5d |  |  |  |
| 109 | 1.2.4.5.1 | Update UT cases document | 0.5d | 2014-12-04 08:00 | 2014-12-04 12:00 | 107 | 1.5d | 0d |  |  |
| 110 | 1.2.4.5.2 | Review UT cases document round 2 | 0.5d | 2014-12-04 13:00 | 2014-12-04 17:00 | 109 | 1.5d | 0d |  |  |
| 111 | 1.2.4.6 | **Manual UT Execution** | 1d | 2014-12-05 08:00 | 2014-12-05 17:00 |  | 1.5d |  |  |  |
| 112 | 1.2.4.6.1 | Execute UT manually & Fix bugs | 0.5d | 2014-12-05 08:00 | 2014-12-05 12:00 | 110 | 1.5d | 0d |  |  |
| 113 | 1.2.4.6.2 | Review UT execution results round 1 | 0.5d | 2014-12-05 13:00 | 2014-12-05 17:00 | 112 | 1.5d | 0d |  |  |
| 114 | 1.2.4.7 | **Automated UT Execution** | 1.5d | 2014-12-08 08:00 | 2014-12-09 12:00 |  | 1.5d |  |  |  |
| 115 | 1.2.4.7.1 | Prepare UT scripts | 0.5d | 2014-12-08 08:00 | 2014-12-08 12:00 | 113 | 1.5d | 0d |  |  |
| 116 | 1.2.4.7.2 | Execute UT automatedly, Tuning scripts, update codes | 0.5d | 2014-12-08 13:00 | 2014-12-08 17:00 | 115 | 1.5d | 0d |  |  |
| 117 | 1.2.4.7.3 | Review UT scripts | 0.5d | 2014-12-09 08:00 | 2014-12-09 12:00 | 116 | 1.5d |  |  |  |
| 118 | 1.2.5 | **UC5 - Cash Transfer** | 11d | 2014-11-24 13:00 | 2014-12-09 12:00 |  | 1.5d |  | Dev5 | 88h |
| 119 | 1.2.5.1 | **Requirement Analyzing** | 1.5d | 2014-11-24 13:00 | 2014-11-25 17:00 |  | 1.5d |  |  |  |
| 120 | 1.2.5.1.1 | Study requirement | 0.4d | 2014-11-24 13:00 | 2014-11-24 16:12 |  | 1.5d | 0d |  |  |
| 121 | 1.2.5.1.2 | Prepare requirement specification | 0.6d | 2014-11-24 16:12 | 2014-11-25 12:00 | 120 | 1.5d | 0d |  |  |
| 122 | 1.2.5.1.3 | Review requirement specification | 0.5d | 2014-11-25 13:00 | 2014-11-25 17:00 | 121 | 1.5d | 0d |  |  |
| 123 | 1.2.5.2 | **Detail Design** | 1.5d | 2014-11-26 08:00 | 2014-11-27 12:00 |  | 1.5d |  |  |  |
| 124 | 1.2.5.2.1 | Study input design document | 0.4d | 2014-11-26 08:00 | 2014-11-26 11:12 | 122 | 1.5d | 0d |  |  |
| 125 | 1.2.5.2.2 | Prepare design specification | 0.6d | 2014-11-26 11:12 | 2014-11-26 17:00 | 124 | 1.5d | 0d |  |  |
| 126 | 1.2.5.2.3 | Review design specification | 0.5d | 2014-11-27 08:00 | 2014-11-27 12:00 | 125 | 1.5d | 0d |  |  |
| 127 | 1.2.5.3 | **UT Cases Preparing** | 1.5d | 2014-11-27 13:00 | 2014-11-28 17:00 |  | 1.5d |  |  |  |
| 128 | 1.2.5.3.1 | Prepare UT cases document | 1d | 2014-11-27 13:00 | 2014-11-28 12:00 | 126 | 1.5d | 0d |  |  |
| 129 | 1.2.5.3.2 | Review UT cases document round 1 | 0.5d | 2014-11-28 13:00 | 2014-11-28 17:00 | 128 | 1.5d | 0d |  |  |
| 130 | 1.2.5.4 | **Coding** | 3d | 2014-12-01 08:00 | 2014-12-03 17:00 |  | 1.5d |  |  |  |
| 131 | 1.2.5.4.1 | Code (output: draft version) | 1d | 2014-12-01 08:00 | 2014-12-01 17:00 | 129 | 1.5d | 0d |  |  |
| 132 | 1.2.5.4.2 | Review codes round 1 | 0.5d | 2014-12-02 08:00 | 2014-12-02 12:00 | 131 | 1.5d | 0d |  |  |
| 133 | 1.2.5.4.3 | Complete code | 0.5d | 2014-12-02 13:00 | 2014-12-02 17:00 | 132 | 1.5d | 0d |  |  |
| 134 | 1.2.5.4.4 | Self review & Fix bugs | 0.5d | 2014-12-03 08:00 | 2014-12-03 12:00 | 133 | 1.5d | 0d |  |  |
| 135 | 1.2.5.4.5 | Review codes round 2 | 0.5d | 2014-12-03 13:00 | 2014-12-03 17:00 | 134 | 1.5d | 0d |  |  |

Notes:
- 110: Eval4
- 113: Eval5
- 122: Eval1
- 126: Eval2
- 135: Eval3

| ID | WBS | Task | Duration | Start | Finish | Predecessors | Total slack | Free slack | Resources | Work |
| --- | --- | --- | --- | --- | --- | --- | --- | --- | --- | --- |
| 136 | 1.2.5.5 | **Update UT Cases** | 1d | 2014-12-04 08:00 | 2014-12-04 17:00 |  | 1.5d |  |  |  |
| 137 | 1.2.5.5.1 | Update UT cases document | 0.5d | 2014-12-04 08:00 | 2014-12-04 12:00 | 135 | 1.5d | 0d |  |  |
| 138 | 1.2.5.5.2 | Review UT cases document round 2 | 0.5d | 2014-12-04 13:00 | 2014-12-04 17:00 | 137 | 1.5d | 0d |  |  |
| 139 | 1.2.5.6 | **Manual UT Execution** | 1d | 2014-12-05 08:00 | 2014-12-05 17:00 |  | 1.5d |  |  |  |
| 140 | 1.2.5.6.1 | Execute UT manually & Fix bugs | 0.5d | 2014-12-05 08:00 | 2014-12-05 12:00 | 138 | 1.5d | 0d |  |  |
| 141 | 1.2.5.6.2 | Review UT execution results round 1 | 0.5d | 2014-12-05 13:00 | 2014-12-05 17:00 | 140 | 1.5d | 0d |  |  |
| 142 | 1.2.5.7 | **Automated UT Execution** | 1.5d | 2014-12-08 08:00 | 2014-12-09 12:00 |  | 1.5d |  |  |  |
| 143 | 1.2.5.7.1 | Prepare UT scripts | 0.5d | 2014-12-08 08:00 | 2014-12-08 12:00 | 141 | 1.5d | 0d |  |  |
| 144 | 1.2.5.7.2 | Execute UT automatedly, Tuning scripts, update codes | 0.5d | 2014-12-08 13:00 | 2014-12-08 17:00 | 143 | 1.5d | 0d |  |  |
| 145 | 1.2.5.7.3 | Review UT scripts | 0.5d | 2014-12-09 08:00 | 2014-12-09 12:00 | 144 | 1.5d |  |  |  |
| 146 | 1.2.6 | **Evaluation** | 1d | 2014-12-09 13:00 | 2014-12-10 12:00 |  | 0.5d |  |  | 8h |
| 147 | 1.2.6.1 | Iteration result presentation | 0.7d | 2014-12-09 13:00 | 2014-12-10 09:36 | 6 | 0.5d | 0d | Team | 5.6h |
| 148 | 1.2.6.2 | Review & milestone review | 0.3d | 2014-12-10 09:36 | 2014-12-10 12:00 | 147 | 0.5d |  | Team | 2.4h |

Notes:
- 138: Eval4
- 141: Eval5
